# Delivery App Launch Plan — Syria

Schedule from MS Project XML, 2026-09-20 to 2027-01-24, 9 hours a day.

## Calendars

- Syria Standard (Sun-Thu): Mon-Thu 08:00-17:00; Fri-Sat off; Sun 08:00-17:00.

## Schedule

| ID | WBS | Task | Type | Duration | Start | Finish | Predecessors | Total slack | Free slack |
| --- | --- | --- | --- | --- | --- | --- | --- | --- | --- |
| 1 | 1 | **Phase 0: Foundation & Company Setup** |  | 6d | 2026-09-20 | 2026-09-27 |  | 0d |  |
| 2 | 1.1 | Finalize legal entity & commercial registration |  | 3d | 2026-09-20 | 2026-09-22 |  | 0d |  |
| 3 | 1.2 | Open corporate bank account |  | 3d | 2026-09-22 | 2026-09-27 | 2 | 85.33d |  |
| 4 | 1.3 | Engage accountant & legal advisor |  | 1d | 2026-09-20 | 2026-09-20 |  | 89.78d |  |
| 5 | 1.4 | Shortlist & evaluate white-label platform vendors |  | 3d | 2026-09-20 | 2026-09-22 |  | 34.67d | 0d |
| 6 | 1.5 | Contract & sign with chosen white-label vendor |  | 3d | 2026-09-22 | 2026-09-27 | 5 | 34.67d | 0d |
| 7 | 2 | **Phase 1: SyTRA Track A Submission (Delivery License)** |  | 71d | 2026-09-22 | 2026-12-20 |  | 0d |  |
| 8 | 2.1 | Finalize feasibility study, tariff & data-protection docs with company details |  | 3d | 2026-09-22 | 2026-09-27 | 2 | 0d |  |
| 9 | 2.2 | Gather signatory docs, ID copies, criminal record clearances |  | 4.63d | 2026-09-22 | 2026-09-29 | 2 | 0.89d |  |
| 10 | 2.3 | Complete SyTRA license application form |  | 2d | 2026-09-27 | 2026-09-29 | 8 | 0d |  |
| 11 | 2.4 | Pay application review fee |  | 1d | 2026-09-29 | 2026-09-29 | 10 | 0d |  |
| 12 | 2.5 | MILESTONE: Submit Track A application to SyTRA |  | 1d | 2026-09-30 | 2026-09-30 | 9, 10, 11 | 0d |  |
| 13 | 2.6 | SyTRA acknowledgment period (up to 15 business days) |  | 15d | 2026-09-30 | 2026-10-20 | 12 | 0d |  |
| 14 | 2.7 | SyTRA review & decision period (up to 45 business days) |  | 45d | 2026-10-20 | 2026-12-15 | 13 | 0d |  |
| 15 | 2.8 | MILESTONE: SyTRA preliminary approval received |  | 1d | 2026-12-15 | 2026-12-16 | 14 | 0d |  |
| 16 | 2.9 | Complete final requirements & pay initial license fee |  | 3d | 2026-12-16 | 2026-12-20 | 15 | 14.22d | 0d |
| 17 | 2.10 | MILESTONE: SyTRA License Granted | milestone | 0d | 2026-12-20 | 2026-12-20 | 16 | 14.22d | 0d |
| 18 | 3 | **Phase 2: White-Label Platform Setup** |  | 14d | 2026-09-27 | 2026-10-13 |  | 34.67d |  |
| 19 | 3.1 | Brand configuration (logo, colors, app name) |  | 5d | 2026-09-27 | 2026-10-01 | 6 | 37.33d | 0d |
| 20 | 3.2 | Set up local hosting within Syria (SyTRA requirement) |  | 5d | 2026-09-27 | 2026-10-01 | 6 | 34.67d | 0d |
| 21 | 3.3 | Configure commission & delivery-fee rules |  | 1d | 2026-10-01 | 2026-10-04 | 19 | 37.33d | 2.67d |
| 22 | 3.4 | Integrate payment gateway |  | 4d | 2026-10-01 | 2026-10-07 | 20 | 34.67d | 0d |
| 23 | 3.5 | Configure SMS verification & security settings |  | 4d | 2026-10-01 | 2026-10-07 | 20 | 34.67d | 0d |
| 24 | 3.6 | Internal QA testing of full app flow |  | 5d | 2026-10-07 | 2026-10-13 | 21, 22, 23 | 34.67d | 0d |
| 25 | 3.7 | MILESTONE: Platform Ready for Testing | milestone | 0d | 2026-10-13 | 2026-10-13 | 24 | 34.67d | 0d |

| ID | WBS | Task | Type | Duration | Start | Finish | Predecessors | Total slack | Free slack |
| --- | --- | --- | --- | --- | --- | --- | --- | --- | --- |
| 26 | 4 | **Phase 3: Hiring & Operations Setup** |  | 30d | 2026-09-22 | 2026-10-29 |  | 50.67d |  |
| 27 | 4.4 | Lease office space |  | 7d | 2026-09-22 | 2026-09-30 | 2 | 73.78d | 0d |
| 28 | 4.5 | Lease bike storage/warehouse space |  | 7d | 2026-09-22 | 2026-09-30 | 2 | 50.67d | 0d |
| 29 | 4.6 | Procure office equipment |  | 4d | 2026-09-30 | 2026-10-06 | 27 | 73.78d | 0d |
| 30 | 4.7 | Procure bike-storage equipment |  | 4d | 2026-09-30 | 2026-10-06 | 28 | 78.22d |  |
| 31 | 4.8 | Procure bikes (40 units) |  | 9d | 2026-09-30 | 2026-10-12 | 28 | 50.67d | 0d |
| 32 | 4.9 | Procure mobile phones & POS devices |  | 14d | 2026-09-30 | 2026-10-19 | 28 | 69.33d |  |
| 33 | 4.3 | Hire Store Mechanics |  | 5d | 2026-09-30 | 2026-10-07 | 28 | 77.33d |  |
| 34 | 4.10 | Hire Support staff (2) |  | 5d | 2026-10-06 | 2026-10-12 | 29 | 73.78d |  |
| 35 | 4.11 | Hire Marketing staff (2) |  | 5d | 2026-10-06 | 2026-10-12 | 29 | 73.78d |  |
| 36 | 4.2 | Hire Accountant (2) |  | 5d | 2026-10-06 | 2026-10-12 | 29 | 73.78d |  |
| 37 | 4.12 | Recruit riders (target 40) |  | 9d | 2026-10-12 | 2026-10-22 | 31 | 50.67d | 0d |
| 38 | 4.13 | Rider onboarding: safety procedures & app training |  | 5d | 2026-10-22 | 2026-10-29 | 37, 31, 25 | 50.67d | 0d |
| 39 | 4.14 | MILESTONE: Operations Team & Fleet Ready | milestone | 0d | 2026-10-29 | 2026-10-29 | 38 | 50.67d | 0d |
| 40 | 5 | **Phase 4: Compliance Finalization (App Accreditation)** |  | 31d | 2026-10-13 | 2026-11-22 |  | 34.67d |  |
| 41 | 5.1 | Prepare Track B (App Accreditation) documents |  | 5d | 2026-10-13 | 2026-10-20 | 25 | 39.11d | 4.44d |
| 42 | 5.2 | Conduct security penetration test on configured app |  | 7d | 2026-10-13 | 2026-10-21 | 25 | 34.67d | 0d |
| 43 | 5.3 | Obtain pentest certificate from accredited security firm |  | 2d | 2026-10-22 | 2026-10-26 | 42 | 34.67d | 0d |
| 44 | 5.4 | Finalize bilingual privacy policy & terms of use |  | 3d | 2026-10-13 | 2026-10-18 | 25 | 40d | 0d |
| 45 | 5.5 | Sign required regulatory pledges (SSL, info-security policy) |  | 1d | 2026-10-18 | 2026-10-19 | 44 | 40d | 5.33d |
| 46 | 5.6 | MILESTONE: Submit Track B application |  | 1d | 2026-10-26 | 2026-10-27 | 41, 43, 45 | 34.67d | 0d |
| 47 | 5.7 | Track B accreditation review period |  | 18d | 2026-10-27 | 2026-11-22 | 46 | 34.67d | 0d |
| 48 | 5.8 | MILESTONE: App Accreditation Granted | milestone | 0d | 2026-11-22 | 2026-11-22 | 47 | 34.67d | 20.44d |
| 49 | 6 | **Phase 5: SyTRA Decision & Pre-Launch** |  | 53d | 2026-10-29 | 2027-01-04 |  | 14.22d |  |
| 50 | 6.1 | Notify SyTRA of intended commercial launch date |  | 1d | 2026-12-16 | 2026-12-16 | 15 | 0d |  |
| 51 | 6.2 | Soft launch / pilot testing with limited riders |  | 7d | 2026-12-20 | 2026-12-28 | 39, 17, 48 | 14.22d | 0d |
| 52 | 6.3 | Marketing campaign launch prep |  | 5d | 2026-10-29 | 2026-11-04 | 39 | 56.89d |  |
| 53 | 6.4 | Address pilot feedback & fixes |  | 4d | 2026-12-29 | 2027-01-04 | 51 | 14.22d |  |

| ID | WBS | Task | Type | Duration | Start | Finish | Predecessors | Total slack |
| --- | --- | --- | --- | --- | --- | --- | --- | --- |
| 54 | 7 | **Phase 6: Commercial Launch** |  | 0d | 2027-01-24 | 2027-01-24 |  | 0d |
| 55 | 7.1 | MILESTONE: Commercial Launch (Aleppo) | milestone | 0d | 2027-01-24 | 2027-01-24 | 50FS+3d, 53, 52 | 0d |
